# Children's Book Schedule

Schedule from MS Project, 2012-04-02 to 2012-11-09, costs in $.
Lucerne Publishing

## Calendars

- Standard: Mon-Fri 08:00-12:00, 13:00-17:00; Sat-Sun off. Exceptions (off unless hours are given): 2012-07-04 (Independence Day Holiday).
- Monday-Wednesday: Mon-Wed 08:00-12:00, 13:00-17:00; Thu-Sun off.

## Resources

| Resource | Unit | Rate |
| --- | --- | --- |
| Carole Poland |  | 52.5 |
| Copyeditors |  | 45 |
| Dan Jump |  | 75.5 |
| Hany Morcos |  | 38.75 |
| Jane Dow |  | 55 |
| Jun Cao |  | 42 |
| Luis Sousa |  | 70 |
| Printing Service |  |  |
| Travel |  |  |
| Tad Orman |  |  |
| Color Setting Services |  |  |
| Bound galley proof | copy | 15 |

## Schedule

| ID | WBS | Task | Type | Duration | Start | Finish | Predecessors | Total slack | Free slack | Constraint | Deadline | Resources | Work | Cost |
| --- | --- | --- | --- | --- | --- | --- | --- | --- | --- | --- | --- | --- | --- | --- |
| 1 | 1 | **Editorial staff meeting** |  | 60.12d | 2012-04-09 08:00 | 2012-07-02 09:00 |  | 93.88d |  |  |  |  | 39h | 1,732.25 |
| 2 | 1.1 | Editorial staff meeting 1 |  | 1h | 2012-04-09 08:00 | 2012-04-09 09:00 |  | 153d |  | start no earlier than 2012-04-09 08:00 |  | Carole Poland; Jun Cao; Hany Morcos | 3h | 133.25 |
| 3 | 1.2 | Editorial staff meeting 2 |  | 1h | 2012-04-16 08:00 | 2012-04-16 09:00 |  | 148d |  | start no earlier than 2012-04-16 08:00 |  | Carole Poland; Jun Cao; Hany Morcos | 3h | 133.25 |
| 4 | 1.3 | Editorial staff meeting 3 |  | 1h | 2012-04-23 08:00 | 2012-04-23 09:00 |  | 143d |  | start no earlier than 2012-04-23 08:00 |  | Carole Poland; Jun Cao; Hany Morcos | 3h | 133.25 |
| 5 | 1.4 | Editorial staff meeting 4 |  | 1h | 2012-04-30 08:00 | 2012-04-30 09:00 |  | 138d |  | start no earlier than 2012-04-30 08:00 |  | Carole Poland; Jun Cao; Hany Morcos | 3h | 133.25 |
| 6 | 1.5 | Editorial staff meeting 5 |  | 1h | 2012-05-07 08:00 | 2012-05-07 09:00 |  | 133d |  | start no earlier than 2012-05-07 08:00 |  | Carole Poland; Jun Cao; Hany Morcos | 3h | 133.25 |
| 7 | 1.6 | Editorial staff meeting 6 |  | 1h | 2012-05-14 08:00 | 2012-05-14 09:00 |  | 128d |  | start no earlier than 2012-05-14 08:00 |  | Carole Poland; Jun Cao; Hany Morcos | 3h | 133.25 |
| 8 | 1.7 | Editorial staff meeting 7 |  | 1h | 2012-05-21 08:00 | 2012-05-21 09:00 |  | 123d |  | start no earlier than 2012-05-21 08:00 |  | Carole Poland; Jun Cao; Hany Morcos | 3h | 133.25 |
| 9 | 1.8 | Editorial staff meeting 8 |  | 1h | 2012-05-28 08:00 | 2012-05-28 09:00 |  | 118d |  | start no earlier than 2012-05-28 08:00 |  | Carole Poland; Jun Cao; Hany Morcos | 3h | 133.25 |
| 10 | 1.9 | Editorial staff meeting 9 |  | 1h | 2012-06-04 08:00 | 2012-06-04 09:00 |  | 113d |  | start no earlier than 2012-06-04 08:00 |  | Carole Poland; Jun Cao; Hany Morcos | 3h | 133.25 |
| 11 | 1.10 | Editorial staff meeting 10 |  | 1h | 2012-06-11 08:00 | 2012-06-11 09:00 |  | 108d |  | start no earlier than 2012-06-11 08:00 |  | Carole Poland; Jun Cao; Hany Morcos | 3h | 133.25 |
| 12 | 1.11 | Editorial staff meeting 11 |  | 1h | 2012-06-18 08:00 | 2012-06-18 09:00 |  | 103d |  | start no earlier than 2012-06-18 08:00 |  | Carole Poland; Jun Cao; Hany Morcos | 3h | 133.25 |
| 13 | 1.12 | Editorial staff meeting 12 |  | 1h | 2012-06-25 08:00 | 2012-06-25 09:00 |  | 98d |  | start no earlier than 2012-06-25 08:00 |  | Carole Poland; Jun Cao; Hany Morcos | 3h | 133.25 |
| 14 | 1.13 | Editorial staff meeting 13 |  | 1h | 2012-07-02 08:00 | 2012-07-02 09:00 |  | 93d |  | start no earlier than 2012-07-02 08:00 |  | Carole Poland; Jun Cao; Hany Morcos | 3h | 133.25 |
| 15 | 2 | **Acquisition** |  | 30d | 2012-04-02 08:00 | 2012-05-11 17:00 |  | -0.75d | 0d |  |  |  | 280h | 9,900 |
| 16 | 2.1 | Manuscript received | milestone | 0d | 2012-04-02 08:00 | 2012-04-02 08:00 |  | -9.5d | 0d |  |  |  |  |  |
| 17 | 2.2 | Content edit |  | 15d | 2012-04-02 08:00 | 2012-04-25 17:00 | 16 | -9.5d | 0d |  |  | Carole Poland | 120h | 6,300 |
| 18 | 2.3 | Author review of content edit |  | 12d | 2012-04-26 08:00 | 2012-05-11 17:00 | 17 | -9.5d | 0d |  |  | Tad Orman; Copyeditors | 160h | 3,600 |
| 19 | 2.4 | Handoff to Editorial | milestone | 0d | 2012-05-11 17:00 | 2012-05-11 17:00 | 18 | -9.5d | 0d |  | 2012-05-11 17:00 | Carole Poland |  |  |
| 20 | 3 | **Editorial** |  | 30d | 2012-05-10 08:00 | 2012-06-20 17:00 | 15 |  |  |  |  |  | 360h | 12,650 |
| 21 | 3.1 | Organize manuscript for copyedit |  | 5d | 2012-05-10 08:00 | 2012-05-16 17:00 |  | 1.25d | 0d |  |  | Hany Morcos | 40h | 1,550 |
| 22 | 3.2 | Copyedit |  | 11.25d | 2012-05-17 08:00 | 2012-06-01 10:00 | 21 | 1.25d | 0d |  |  | Copyeditors [200%] | 180h | 8,100 |
| 23 | 3.3 | Author review of copyedit |  | 10d | 2012-06-01 10:00 | 2012-06-15 10:00 | 22 | 1.25d |  |  |  | Tad Orman; Copyeditors [25%] | 100h | 900 |
| 24 | 3.4 | Copyedit incorp |  | 5d | 2012-06-12 15:00 | 2012-06-19 15:00 | 23FS-2.5% | 1.25d | 0d |  |  | Carole Poland | 40h | 2,100 |
| 25 | 3.5 | Handoff to Production | milestone | 0d | 2012-06-19 15:00 | 2012-06-19 15:00 | 24 | 1.25d |  |  |  | Hany Morcos |  |  |

| ID | WBS | Task | Type | Duration | Start | Finish | Predecessors | Total slack | Free slack | Constraint | Calendar | Resources | Work | Cost |
| --- | --- | --- | --- | --- | --- | --- | --- | --- | --- | --- | --- | --- | --- | --- |
| 26 | 4 | **Design and Production** |  | 50d | 2012-06-21 08:00 | 2012-08-30 17:00 | 20 | 7d |  |  |  |  | 772h | 37,635 |
| 27 | 4.1 | Set pages |  | 15d | 2012-06-21 08:00 | 2012-07-12 17:00 |  | 7d | 0d |  |  | Jane Dow | 120h | 7,590 |
| 28 | 4.2 | Interior illustration design |  | 15d | 2012-06-21 08:00 | 2012-07-12 17:00 | 27SS | 7d | 0d |  |  | Luis Sousa; Hany Morcos | 240h | 13,050 |
| 29 | 4.3 | **1st Pages review** |  | 25d | 2012-07-13 08:00 | 2012-08-16 17:00 | 28 | 7d | 0d |  |  |  | 220h | 7,780 |
| 30 | 4.3.1 | Proofread and index |  | 10d | 2012-07-13 08:00 | 2012-07-26 17:00 |  | 33d | 0d | start no earlier than 2012-07-13 08:00 |  | Tad Orman; Copyeditors | 100h | 900 |
| 31 | 4.3.2 | Incorporate 1st Pages review |  | 5d | 2012-07-27 08:00 | 2012-08-02 17:00 | 30 | 7d | 0d |  |  | Hany Morcos | 40h | 1,550 |
| 32 | 4.3.3 | Send proofed pages to Production | milestone | 0d | 2012-08-02 17:00 | 2012-08-02 17:00 | 31 | 7d | 0d |  |  | Hany Morcos |  |  |
| 33 | 4.3.4 | Enter page corrections and index |  | 5d | 2012-08-03 08:00 | 2012-08-09 17:00 | 32 | 7d | 0d |  |  | Jane Dow | 40h | 2,530 |
| 34 | 4.3.5 | Cover design |  | 5d | 2012-08-10 08:00 | 2012-08-16 17:00 | 33 | 7d | 0d |  |  | Luis Sousa | 40h | 2,800 |
| 35 | 4.4 | **2nd Pages review** |  | 10d | 2012-08-17 08:00 | 2012-08-30 17:00 |  | 7d | 1d |  |  |  | 112h | 5,485 |
| 36 | 4.4.1 | Proof and review |  | 5d | 2012-08-17 08:00 | 2012-08-23 17:00 | 34 | 7d | 0d |  |  | Hany Morcos | 40h | 1,550 |
| 37 | 4.4.2 | Send proofed pages to Production | milestone | 0d | 2012-08-23 17:00 | 2012-08-23 17:00 | 36 | 7d | 0d |  |  | Hany Morcos |  |  |
| 38 | 4.4.3 | Final review |  | 5d | 2012-08-24 08:00 | 2012-08-30 17:00 | 37 | 7d |  |  |  | Jane Dow; Hany Morcos [50%]; Carole Poland [50%] | 72h | 3,935 |
| 39 | 4.5 | **Design book's companion website** |  | 5d | 2012-08-17 08:00 | 2012-08-23 17:00 | 29 | 12d | 0d |  |  |  | 80h | 3,730 |
| 40 | 4.5.1 | Create mockup |  | 3d | 2012-08-17 08:00 | 2012-08-21 17:00 |  | 12d | 0d |  |  | Luis Sousa; Hany Morcos | 48h | 2,610 |
| 41 | 4.5.2 | Review with author |  | 2d | 2012-08-22 08:00 | 2012-08-23 17:00 | 40 | 12d |  |  |  | Luis Sousa; Tad Orman | 32h | 1,120 |
| 42 | 5 | **Color prep and printing** |  | 50d | 2012-09-03 08:00 | 2012-11-09 17:00 | 39 |  |  |  |  |  | 328h | 5,310 |
| 43 | 5.1 | Send to color house |  | 1d | 2012-09-03 08:00 | 2012-09-03 17:00 | 35 | 4d | 0d |  | Monday-Wednesday | Hany Morcos | 8h | 310 |
| 44 | 5.2 | Generate proofs |  | 10d | 2012-09-04 08:00 | 2012-09-17 17:00 | 43 | 6d | 0d |  |  | Color Setting Services | 80h | 5,000 |
| 45 | 5.3 | Print and ship |  | 30d | 2012-09-21 08:00 | 2012-11-01 17:00 | 44FS+3d | 6d |  |  |  | Printing Service | 240h |  |
| 46 | 6 | **Book launch prep** |  | 17d | 2012-08-24 08:00 | 2012-09-17 17:00 |  | 39d |  |  |  |  | 196h | 7,410 |
| 47 | 6.1 | Launch planning |  | 5d | 2012-08-24 08:00 | 2012-08-30 17:00 | 39 | 39d | 0d |  |  | Carole Poland [50%]; Jane Dow | 60h | 3,580 |
| 48 | 6.2 | Assign launch team members |  | 1d | 2012-08-31 08:00 | 2012-08-31 17:00 | 47 | 39d | 0d |  |  | Carole Poland | 8h | 420 |
| 49 | 6.3 | Complete author questionnaire |  | 5d | 2012-09-03 08:00 | 2012-09-07 17:00 | 48 | 39d | 0d |  |  | Hany Morcos; Tad Orman | 80h | 1,550 |
| 50 | 6.4 | Schedule author interviews |  | 1d | 2012-09-10 08:00 | 2012-09-10 17:00 | 49 | 39d | 0d |  |  | Hany Morcos | 8h | 310 |
| 51 | 6.5 | Design and order marketing material |  | 5d | 2012-09-11 08:00 | 2012-09-17 17:00 | 50 | 39d |  |  |  | Hany Morcos | 40h | 1,550 |
